# Cronograma [CrossFit Itajubá] FINALIZADO

How a schedule from MS Project changed from version to version. A marks actual dates.

## Version 1 (saved 2017-10-25, file Cronograma [Miau Au] (1).mpp)

Note of the change: Documentos

| ID | WBS | Task | Duration | Start | Finish | Predecessors | Complete | Total float | Constraint |
| --- | --- | --- | --- | --- | --- | --- | --- | --- | --- |
| 1 | 1 | **Projeto - Miau Au** | 62.12d | 2017-08-10 08:00 A | 2017-11-03 18:00 |  | 82% |  |  |
| 2 | 1.1 | **Prospecção** | 4.5d | 2017-08-10 08:00 A | 2017-08-16 12:00 A |  | 100% |  |  |
| 3 | 1.1.1 | **PTEC -Proposta Técnica** | 1.5d | 2017-08-10 08:00 A | 2017-08-11 12:00 A |  | 100% |  |  |
| 4 |  | Redigir PTEC | 0.62d | 2017-08-10 08:00 A | 2017-08-10 14:00 A |  | 100% |  |  |
| 5 |  | Revisar PTEC | 0.38d | 2017-08-11 09:00 A | 2017-08-11 12:00 A | 4 | 100% |  |  |
| 6 | 1.1.2 | **ETP - Estimativa de Tamanho Preliminar** | 1.38d | 2017-08-11 09:00 A | 2017-08-14 12:00 A |  | 100% |  |  |
| 7 |  | Elaborar ETP | 0.88d | 2017-08-11 09:00 A | 2017-08-11 17:00 A | 5 | 100% |  |  |
| 8 |  | Revisar ETP | 0.38d | 2017-08-14 09:00 A | 2017-08-14 12:00 A | 7 | 100% |  |  |
| 9 | 1.1.3 | **CRP e ORP - Cronograma e Orçamento Preliminares** | 1.38d | 2017-08-14 09:00 A | 2017-08-15 12:00 A |  | 100% |  |  |
| 10 |  | Elaborar CRP e ORP | 0.88d | 2017-08-14 09:00 A | 2017-08-14 17:00 A | 8 | 100% |  |  |
| 11 |  | Revisar CRP e ORP | 0.38d | 2017-08-15 09:00 A | 2017-08-15 12:00 A | 10 | 100% |  |  |
| 12 | 1.1.4 | **Aprovações - Prospecção** | 0.38d | 2017-08-16 09:00 A | 2017-08-16 12:00 A |  | 100% |  |  |
| 13 |  | Aprovar PTEC | 0.38d | 2017-08-16 09:00 A | 2017-08-16 12:00 A | 11 | 100% |  |  |
| 14 |  | Aprovar ETP | 0.38d | 2017-08-16 09:00 A | 2017-08-16 12:00 A | 13 | 100% |  | finish no earlier than 2017-08-15 18:00 |
| 15 |  | Aprovar CRP e ORP | 0.38d | 2017-08-16 09:00 A | 2017-08-16 12:00 A | 14 | 100% |  | finish no earlier than 2017-08-16 18:00 |
| 16 | 1.2 | **Planejamento** | 4.38d | 2017-08-17 09:00 A | 2017-08-23 12:00 A |  | 100% |  |  |
| 17 | 1.2.1 | **EAP** | 0.88d | 2017-08-17 09:00 A | 2017-08-17 17:00 A |  | 100% |  |  |
| 18 |  | Elaborar EAP | 0.88d | 2017-08-17 09:00 A | 2017-08-17 17:00 A | 15 | 100% |  |  |
| 19 |  | Revisar EAP | 0.38d | 2017-08-17 09:00 A | 2017-08-17 12:00 A | 18 | 100% |  |  |
| 20 | 1.2.2 | **Plano de Projeto** | 1.38d | 2017-08-17 09:00 A | 2017-08-18 12:00 A |  | 100% |  |  |
| 21 |  | Elaborar Plano de Projeto | 0.88d | 2017-08-17 09:00 A | 2017-08-17 17:00 A | 19 | 100% |  |  |
| 22 |  | Revisar Plano de Projeto | 0.38d | 2017-08-18 09:00 A | 2017-08-18 12:00 A | 21 | 100% |  |  |
| 23 | 1.2.3 | **ETD - Estimativa de Tamanho Definitiva** | 1.38d | 2017-08-18 09:00 A | 2017-08-21 12:00 A |  | 100% |  |  |
| 24 |  | Elaborar EDT | 0.88d | 2017-08-18 09:00 A | 2017-08-18 17:00 A | 22 | 100% |  |  |
| 25 |  | Revisar EDT | 0.38d | 2017-08-21 09:00 A | 2017-08-21 12:00 A | 24 | 100% |  |  |
| 26 | 1.2.4 | **CRD e ORD - Cronograma e Orçamento Definitivo** | 1.38d | 2017-08-21 09:00 A | 2017-08-22 12:00 A |  | 100% |  |  |
| 27 |  | Elaborar CRD e ORD | 0.88d | 2017-08-21 09:00 A | 2017-08-21 17:00 A | 25 | 100% |  |  |
| 28 |  | Revisar CRD e ORD | 0.38d | 2017-08-22 09:00 A | 2017-08-22 12:00 A | 27 | 100% |  |  |
| 29 | 1.2.5 | **Aprovações - Planejamento** | 0.38d | 2017-08-23 09:00 A | 2017-08-23 12:00 A |  | 100% |  |  |
| 30 |  | Aprovar EAP | 0.38d | 2017-08-23 09:00 A | 2017-08-23 12:00 A | 28 | 100% |  |  |
| 31 |  | Aprovar Plano de Projeto | 0.38d | 2017-08-23 09:00 A | 2017-08-23 12:00 A | 30 | 100% |  |  |
| 32 |  | Aprovar ETD | 0.38d | 2017-08-23 09:00 A | 2017-08-23 12:00 A | 31 | 100% |  |  |
| 33 |  | Aprovar CRD e ORD | 0.38d | 2017-08-23 09:00 A | 2017-08-23 12:00 A | 32 | 100% |  |  |
| 34 | 1.3 | **Analise** | 1.54d? | 2017-08-24 09:00 A | 2017-08-25 14:20 A |  | 100% |  |  |
| 35 | 1.3.1 | **Documento de Requisitos** | 0.88d | 2017-08-24 09:00 A | 2017-08-24 18:00 A |  | 100% |  |  |
| 36 |  | Especificar Requisitos Funcionais do Sistema | 0.31d | 2017-08-24 09:00 A | 2017-08-24 18:00 A | 33 | 100% |  | finish no earlier than 2017-09-01 18:00 |
| 37 |  | Elaborar DRE | 0.44d | 2017-08-24 09:00 A | 2017-08-24 13:30 A | 36 | 100% |  | finish no earlier than 2017-09-08 18:00 |
| 38 |  | Realizar correções no DRE | 0.5d | 2017-08-24 09:00 A | 2017-08-24 14:00 A | 37 | 100% |  |  |
| 39 | 1.3.2 | **Matriz de Rastreabilidade** | 0.54d? | 2017-08-25 09:00 A | 2017-08-25 14:20 A |  | 100% |  |  |
| 40 |  | Elaborar a Matriz | 0.29d | 2017-08-25 09:00 A | 2017-08-25 11:20 A | 38 | 100% |  | start no earlier than 2017-08-25 09:00 |
| 41 |  | Revistar a Matriz | 0.12d? | 2017-08-25 13:20 A | 2017-08-25 14:20 A | 40 | 100% |  | start no earlier than 2017-08-17 09:00 |
| 42 | 1.4 | **Release** | 46.12d | 2017-09-01 08:00 A | 2017-11-03 18:00 |  | 65% |  |  |
| 43 | 1.4.1 | **Modelagem do Banco de Dados** | 9.5d | 2017-09-01 08:00 A | 2017-09-14 12:00 A |  | 100% |  |  |
| 44 |  | Modelo E-R | 0.62d | 2017-09-01 08:00 A | 2017-09-01 14:00 A | 41 | 100% |  | finish no earlier than 2017-09-01 18:00 |
| 45 |  | Modelo Lógico | 0.62d | 2017-09-12 09:00 A | 2017-09-12 15:00 A | 44 | 100% |  | start no earlier than 2017-09-12 09:00 |
| 46 |  | Modelo Físico | 0.62d | 2017-09-13 09:00 A | 2017-09-13 15:00 A | 45 | 100% |  | start no earlier than 2017-09-13 09:00 |
| 47 |  | Revisar a modelagem do Banco de Dados | 0.38d | 2017-09-14 09:00 A | 2017-09-14 12:00 A | 46 | 100% |  | start no earlier than 2017-09-14 09:00 |
| 48 | 1.4.2 | **Implementação e Teste** | 23d | 2017-10-04 09:00 | 2017-11-03 18:00 |  | 57% |  |  |
| 49 | 1.4.2.1 | **Release 1** | 4d | 2017-10-16 09:00 A | 2017-10-20 09:00 |  | 100% |  |  |
| 50 |  | [RFS001] Publicar Aviso | 0.62d? | 2017-10-16 09:00 A | 2017-10-16 15:00 A | 47 | 100% |  |  |
| 51 |  | [RFS002] Editar Aviso | 0.62d? | 2017-10-16 09:00 A | 2017-10-16 15:00 A | 50 | 100% |  |  |
| 52 |  | [RFS003] Deletar Aviso | 0.62d? | 2017-10-17 09:00 A | 2017-10-17 15:00 A | 51 | 100% |  |  |
| 53 |  | [RFS004] Visualizar Aviso | 0.62d? | 2017-10-17 09:00 A | 2017-10-17 15:00 A | 52 | 100% |  |  |
| 54 |  | [RFS009] Cadastrar Usuário | 1d | 2017-10-18 09:00 A | 2017-10-19 09:00 A |  | 100% |  |  |
| 55 |  | [RFS010] Consultar Usuário | 0.62d | 2017-10-18 09:00 A | 2017-10-18 15:00 A |  | 100% |  |  |
| 56 |  | [RFS011] Alterar Usuário | 0.62d | 2017-10-19 09:00 A | 2017-10-19 15:00 A |  | 100% |  |  |
| 57 |  | [RFS012] Remover Usuário | 0.62d | 2017-10-19 09:00 A | 2017-10-19 15:00 A |  | 100% |  |  |
| 58 | 1.4.2.2 | **Teste** | 0.75d | 2017-10-20 09:00 A | 2017-10-20 16:00 |  | 100% |  |  |
| 59 |  | Teste e Validação do Release 1 | 0.62d | 2017-10-20 09:00 A | 2017-10-20 15:00 A | 53 | 100% |  | finish no earlier than 2017-10-09 18:00 |
| 60 | 1.4.2.3 | **Release 2** | 3d | 2017-10-27 09:00 | 2017-10-31 18:00 |  |  |  |  |
| 61 |  | [RFS005] Publicar Mensagem | 0.62d | 2017-10-27 09:00 | 2017-10-27 15:00 | 59 |  | 3.06d | start no earlier than 2017-10-27 09:00 |
| 62 |  | [RFS006] Editar Mensagem | 0.62d | 2017-10-27 15:00 | 2017-10-30 11:00 | 61 |  | 3.06d |  |
| 63 |  | [RFS007] Deletar Mensagem | 0.62d | 2017-10-30 11:00 | 2017-10-30 17:00 | 62 |  | 3.06d |  |
| 64 |  | [RFS008] Visualizar Mensagem | 0.62d | 2017-10-31 08:00 | 2017-10-31 14:00 | 63 |  | 3.06d |  |
| 65 | 1.4.2.4 | **Teste** | 1d | 2017-11-01 09:00 | 2017-11-01 18:00 |  |  |  |  |
| 66 |  | Teste e Validação do Release 2 | 0.31d | 2017-11-01 09:00 | 2017-11-01 11:30 | 64 |  | 2.56d |  |
| 67 | 1.5.1.11 | **Release 3** | 2d | 2017-11-02 09:00 | 2017-11-03 18:00 |  |  |  |  |
| 68 |  | [RFSF013] Avaliar Ferramenta | 1d | 2017-11-02 09:00 | 2017-11-03 09:00 |  |  | 0.19d | start no earlier than 2017-11-02 09:00 |
| 69 | 1.4.2.6 | **Teste** | 0.69d | 2017-11-03 09:00 | 2017-11-03 15:30 |  |  | 0.19d |  |
| 70 |  | Teste e Validação do Release 3 | 0.31d | 2017-11-03 09:00 | 2017-11-03 11:30 | 68 |  | 0.19d |  |

| ID | Task | Duration | Start | Finish | Predecessors | Total float | Constraint |
| --- | --- | --- | --- | --- | --- | --- | --- |
| 71 | Aprovação do Documento | 0.38d | 2017-11-03 11:30 | 2017-11-03 15:30 | 70 | 0.19d | finish no earlier than 2017-10-25 18:00 |

## Version 2 (saved 2017-11-09, file Cronograma [Miau Au].mpp)

Last finish 2017-11-03 → 2017-11-23 (+20d). Complete tasks 39 → 47.

Added:

| ID | Task | Duration | Start | Finish | Predecessors | Constraint | Resources |
| --- | --- | --- | --- | --- | --- | --- | --- |
| 64 | [RFS008] Marcar como Pergunta Frequente | 0.38d? | 2017-10-31 14:00 A | 2017-10-31 17:00 A | 63 |  | Luã |
| 65 | [RFS028] Delegar Autoridade de Usuário | 0.5d? | 2017-11-01 09:00 A | 2017-11-01 14:00 A | 64 |  | Luã |
| 66 | [RFS029] Remover Autoridade de Usuário | 0.38d? | 2017-11-01 14:00 A | 2017-11-01 18:00 A | 65 | finish no earlier than 2017-11-01 18:00 | Luã |
| 67 | [RFS030] Alterar Autoridade de Usuário | 0.38d? | 2017-11-01 09:00 A | 2017-11-01 12:00 A | 66 |  | Luã |
| 71 | [RFS016] Publicar Notícia | 0.5d? | 2017-11-10 09:00 | 2017-11-10 14:00 | 69 |  | Luã |
| 72 | [RFS017] Visualizar Notícia | 0.5d? | 2017-11-10 14:00 | 2017-11-13 09:00 | 71 | finish no earlier than 2017-11-10 18:00 | Luã |
| 73 | [RFS018] Editar Notícia | 0.5d? | 2017-11-13 09:00 | 2017-11-13 14:00 | 72 |  | Luã |
| 74 | [RFS019] Deletar Notícia | 0.5d? | 2017-11-13 14:00 | 2017-11-14 09:00 | 73 |  | Luã |
| 75 | [RFS020] Comentar Notícia | 0.5d? | 2017-11-14 09:00 | 2017-11-14 14:00 | 74 |  | Luã |
| 76 | [RFS021] Editar Comentário | 0.5d? | 2017-11-14 14:00 | 2017-11-15 09:00 | 75 |  | Luã |
| 77 | [RFS022] Deletar Comentário | 0.5d? | 2017-11-15 09:00 | 2017-11-15 14:00 | 76 |  | Luã |
| 78 | Relatório 1 | 0.25d? | 2017-11-15 14:00 | 2017-11-15 16:00 | 77 |  | Luã |
| 81 | **Release 4** | 5d | 2017-11-17 09:00 | 2017-11-23 18:00 |  |  |  |
| 82 | [RFS012] Responder Aviso ou Pergunta | 0.5d? | 2017-11-17 09:00 | 2017-11-17 14:00 | 80 |  | Luã |
| 83 | [RFS013] Deletar Resposta | 0.5d? | 2017-11-17 14:00 | 2017-11-20 09:00 | 82 |  | Luã |
| 84 | [RFS014] Editar Resposta | 0.5d? | 2017-11-20 09:00 | 2017-11-20 14:00 | 83 |  | Luã |
| 85 | [RFS015] Visualizar Resposta | 0.5d? | 2017-11-20 14:00 | 2017-11-21 09:00 | 84 |  | Luã |
| 86 | [RFS023] Cadastrar Patrocinador | 0.5d? | 2017-11-21 09:00 | 2017-11-21 14:00 | 85 |  | Luã |
| 87 | [RFS024] Consultar Patrocinador | 0.5d? | 2017-11-21 14:00 | 2017-11-22 09:00 | 86 |  | Luã |
| 88 | [RFS025] Alterar Patrocinador | 0.5d? | 2017-11-22 09:00 | 2017-11-22 14:00 | 87 |  | Luã |
| 89 | [RFS026] Remover Patrocinador | 0.5d? | 2017-11-22 14:00 | 2017-11-23 09:00 | 88 |  | Luã |
| 90 | Relatório 2 | 0.25d? | 2017-11-23 09:00 | 2017-11-23 11:00 | 89 |  | Luã |
| 91 | **Teste** | 1d | 2017-11-23 09:00 | 2017-11-23 18:00 |  |  |  |
| 92 | Teste e Validação do Release 4 | 0.38d | 2017-11-23 09:00 | 2017-11-23 12:00 | 89 |  | Gabriela |

Removed: 62 [RFS006] Editar Mensagem; 68 [RFSF013] Avaliar Ferramenta

Changed:

| ID | Task | Start | Finish | Duration | Complete | Total float | Predecessors | Other |
| --- | --- | --- | --- | --- | --- | --- | --- | --- |
| 1 | **Projeto - Miau Au** |  | 2017-11-03 18:00 → 2017-11-23 18:00 (+20d) | 62.12d → 76.12d | 82% → 60% |  |  | baseline finish 2017-11-15 18:00 → 2017-11-23 18:00 |
| 2 | **Prospecção** |  | 2017-08-16 12:00 A → 2017-08-16 10:00 A | 4.5d → 4.25d |  |  |  | baseline finish 2017-08-16 12:00 → 2017-08-16 10:00 |
| 3 | **PTEC -Proposta Técnica** |  | 2017-08-11 12:00 A → 2017-08-11 10:00 A | 1.5d → 1.25d |  |  |  | baseline finish 2017-08-11 12:00 → 2017-08-11 10:00 |
| 4 | Redigir PTEC |  | 2017-08-10 14:00 A → 2017-08-10 10:00 A | 0.62d → 0.25d |  |  |  | baseline finish 2017-08-10 14:00 → 2017-08-10 10:00 |
| 5 | Revisar PTEC |  | 2017-08-11 12:00 A → 2017-08-11 10:00 A | 0.38d → 0.12d |  |  |  | baseline finish 2017-08-11 12:00 → 2017-08-11 10:00 |
| 6 | **ETP - Estimativa de Tamanho Preliminar** |  | 2017-08-14 12:00 A → 2017-08-14 10:00 A | 1.38d → 1.12d |  |  |  | baseline finish 2017-08-14 12:00 → 2017-08-14 10:00 |
| 7 | Elaborar ETP |  | 2017-08-11 17:00 A → 2017-08-11 11:00 A | 0.88d → 0.25d |  |  |  | baseline finish 2017-08-11 17:00 → 2017-08-11 11:00 |
| 8 | Revisar ETP |  | 2017-08-14 12:00 A → 2017-08-14 10:00 A | 0.38d → 0.12d |  |  |  | baseline finish 2017-08-14 12:00 → 2017-08-14 10:00 |
| 9 | **CRP e ORP - Cronograma e Orçamento Preliminares** |  | 2017-08-15 12:00 A → 2017-08-15 10:00 A | 1.38d → 1.12d |  |  |  | baseline finish 2017-08-15 12:00 → 2017-08-15 10:00 |
| 10 | Elaborar CRP e ORP |  | 2017-08-14 17:00 A → 2017-08-14 11:00 A | 0.88d → 0.25d |  |  |  | baseline finish 2017-08-14 17:00 → 2017-08-14 11:00 |
| 11 | Revisar CRP e ORP |  | 2017-08-15 12:00 A → 2017-08-15 10:00 A | 0.38d → 0.12d |  |  |  | baseline finish 2017-08-15 12:00 → 2017-08-15 10:00 |
| 12 | **Aprovações - Prospecção** |  | 2017-08-16 12:00 A → 2017-08-16 10:00 A | 0.38d → 0.12d |  |  |  | baseline finish 2017-08-16 12:00 → 2017-08-16 10:00 |
| 13 | Aprovar PTEC |  | 2017-08-16 12:00 A → 2017-08-16 10:00 A | 0.38d → 0.12d |  |  |  | baseline finish 2017-08-16 12:00 → 2017-08-16 10:00 |
| 14 | Aprovar ETP |  | 2017-08-16 12:00 A → 2017-08-16 10:00 A | 0.38d → 0.12d |  |  |  | baseline finish 2017-08-16 12:00 → 2017-08-16 10:00 |
| 15 | Aprovar CRP e ORP |  | 2017-08-16 12:00 A → 2017-08-16 10:00 A | 0.38d → 0.12d |  |  |  | baseline finish 2017-08-16 12:00 → 2017-08-16 10:00 |
| 16 | **Planejamento** |  | 2017-08-23 12:00 A → 2017-08-23 10:00 A | 4.38d → 4.12d |  |  |  | baseline finish 2017-08-23 12:00 → 2017-08-23 10:00 |
| 17 | **EAP** |  | 2017-08-17 17:00 A → 2017-08-17 11:00 A | 0.88d → 0.25d |  |  |  | baseline finish 2017-08-17 17:00 → 2017-08-17 11:00 |
| 18 | Elaborar EAP |  | 2017-08-17 17:00 A → 2017-08-17 11:00 A | 0.88d → 0.25d |  |  |  | baseline finish 2017-08-17 17:00 → 2017-08-17 11:00 |
| 19 | Revisar EAP |  | 2017-08-17 12:00 A → 2017-08-17 10:00 A | 0.38d → 0.12d |  |  |  | baseline finish 2017-08-17 12:00 → 2017-08-17 10:00 |
| 20 | **Plano de Projeto** |  | 2017-08-18 12:00 A → 2017-08-18 10:00 A | 1.38d → 1.12d |  |  |  | baseline finish 2017-08-18 12:00 → 2017-08-18 10:00 |
| 21 | Elaborar Plano de Projeto |  | 2017-08-17 17:00 A → 2017-08-17 11:00 A | 0.88d → 0.25d |  |  |  | baseline finish 2017-08-17 17:00 → 2017-08-17 11:00 |
| 22 | Revisar Plano de Projeto |  | 2017-08-18 12:00 A → 2017-08-18 10:00 A | 0.38d → 0.12d |  |  |  | baseline finish 2017-08-18 12:00 → 2017-08-18 10:00 |
| 23 | **ETD - Estimativa de Tamanho Definitiva** |  | 2017-08-21 12:00 A → 2017-08-21 10:00 A | 1.38d → 1.12d |  |  |  | baseline finish 2017-08-21 12:00 → 2017-08-21 10:00 |
| 24 | Elaborar EDT |  | 2017-08-18 17:00 A → 2017-08-18 11:00 A | 0.88d → 0.25d |  |  |  | baseline finish 2017-08-18 17:00 → 2017-08-18 11:00 |
| 25 | Revisar EDT |  | 2017-08-21 12:00 A → 2017-08-21 10:00 A | 0.38d → 0.12d |  |  |  | baseline finish 2017-08-21 12:00 → 2017-08-21 10:00 |
| 26 | **CRD e ORD - Cronograma e Orçamento Definitivo** |  | 2017-08-22 12:00 A → 2017-08-22 10:00 A | 1.38d → 1.12d |  |  |  | baseline finish 2017-08-22 12:00 → 2017-08-22 10:00 |
| 27 | Elaborar CRD e ORD |  | 2017-08-21 17:00 A → 2017-08-21 14:00 A | 0.88d → 0.5d |  |  |  | baseline finish 2017-08-21 17:00 → 2017-08-21 14:00 |
| 28 | Revisar CRD e ORD |  | 2017-08-22 12:00 A → 2017-08-22 10:00 A | 0.38d → 0.12d |  |  |  | baseline finish 2017-08-22 12:00 → 2017-08-22 10:00 |
| 29 | **Aprovações - Planejamento** |  | 2017-08-23 12:00 A → 2017-08-23 10:00 A | 0.38d → 0.12d |  |  |  | baseline finish 2017-08-23 12:00 → 2017-08-23 10:00 |
| 30 | Aprovar EAP |  | 2017-08-23 12:00 A → 2017-08-23 10:00 A | 0.38d → 0.12d |  |  |  | baseline finish 2017-08-23 12:00 → 2017-08-23 10:00 |
| 31 | Aprovar Plano de Projeto |  | 2017-08-23 12:00 A → 2017-08-23 10:00 A | 0.38d → 0.12d |  |  |  | baseline finish 2017-08-23 12:00 → 2017-08-23 10:00 |
| 32 | Aprovar ETD |  | 2017-08-23 12:00 A → 2017-08-23 10:00 A | 0.38d → 0.12d |  |  |  | baseline finish 2017-08-23 12:00 → 2017-08-23 10:00 |
| 33 | Aprovar CRD e ORD |  | 2017-08-23 12:00 A → 2017-08-23 10:00 A | 0.38d → 0.12d |  |  |  | baseline finish 2017-08-23 12:00 → 2017-08-23 10:00 |
| 34 | **Analise** |  | 2017-08-25 14:20 A → 2017-08-25 13:40 A | 1.54d? → 1.46d? |  |  |  | baseline finish 2017-08-25 14:20 → 2017-08-25 13:40 |
| 35 | **Documento de Requisitos** |  | 2017-08-24 18:00 A → 2017-08-24 10:00 A | 0.88d → 0.12d |  |  |  | baseline finish 2017-08-24 18:00 → 2017-08-24 10:00 |
| 36 | Especificar Requisitos Funcionais do Sistema |  | 2017-08-24 18:00 A → 2017-08-24 10:00 A | 0.31d → 0.12d |  |  |  | baseline finish 2017-08-24 18:00 → 2017-08-24 10:00 |
| 37 | Elaborar DRE |  | 2017-08-24 13:30 A → 2017-08-24 10:00 A | 0.44d → 0.12d |  |  |  | baseline finish 2017-08-24 13:30 → 2017-08-24 10:00 |
| 38 | Realizar correções no DRE |  | 2017-08-24 14:00 A → 2017-08-24 10:00 A | 0.5d → 0.12d |  |  |  | baseline finish 2017-08-24 14:00 → 2017-08-24 10:00 |
| 39 | **Matriz de Rastreabilidade** |  | 2017-08-25 14:20 A → 2017-08-25 13:40 A | 0.54d? → 0.46d? |  |  |  | baseline finish 2017-08-25 14:20 → 2017-08-25 13:40 |
| 40 | Elaborar a Matriz |  | 2017-08-25 11:20 A → 2017-08-25 09:40 A | 0.29d → 0.08d |  |  |  | baseline finish 2017-08-25 11:20 → 2017-08-25 09:40 |
| 41 | Revistar a Matriz |  | 2017-08-25 14:20 A → 2017-08-25 13:40 A | 0.12d? → 0.04d? |  |  |  | baseline finish 2017-08-25 14:20 → 2017-08-25 13:40 |
| 42 | **Release** |  | 2017-11-03 18:00 → 2017-11-23 18:00 (+20d) | 46.12d → 60.12d | 65% → 50% |  |  | baseline finish 2017-11-15 18:00 → 2017-11-23 18:00 |
| 43 | **Modelagem do Banco de Dados** |  | 2017-09-14 12:00 A → 2017-09-14 10:30 A | 9.5d → 9.31d |  |  |  | baseline finish 2017-09-14 12:00 → 2017-09-14 10:30 |
| 44 | Modelo E-R |  | 2017-09-01 14:00 A → 2017-09-01 18:00 A | 0.62d → 0.19d |  |  |  | baseline finish 2017-09-01 14:00 → 2017-09-01 18:00 |
| 45 | Modelo Lógico |  | 2017-09-12 15:00 A → 2017-09-12 10:30 A | 0.62d → 0.19d |  |  |  | baseline finish 2017-09-12 15:00 → 2017-09-12 10:30 |
| 46 | Modelo Físico |  | 2017-09-13 15:00 A → 2017-09-13 10:30 A | 0.62d → 0.19d |  |  |  | baseline finish 2017-09-13 15:00 → 2017-09-13 10:30 |
| 47 | Revisar a modelagem do Banco de Dados |  | 2017-09-14 12:00 A → 2017-09-14 10:30 A | 0.38d → 0.19d |  |  |  | baseline finish 2017-09-14 12:00 → 2017-09-14 10:30 |
| 48 | **Implementação e Teste** |  | 2017-11-03 18:00 → 2017-11-23 18:00 (+20d) | 23d → 37d | 57% → 48% |  |  | baseline start 2017-10-20 09:00 → 2017-10-04 09:00; baseline finish 2017-11-15 18:00 → 2017-11-23 18:00 |
| 49 | **Release 1** |  |  |  |  |  |  | baseline start 2017-10-20 09:00 → 2017-10-16 09:00; baseline finish 2017-10-24 14:00 → 2017-10-20 09:00 |
| 50 | [RFS001] Publicar Aviso |  | 2017-10-16 15:00 A → 2017-10-16 14:00 A | 0.62d? → 0.5d? |  |  |  | baseline start 2017-10-20 09:00 → 2017-10-16 09:00; baseline finish 2017-10-20 15:00 → 2017-10-16 14:00 |
| 51 | [RFS002] Editar Aviso |  | 2017-10-16 15:00 A → 2017-10-16 14:00 A | 0.62d? → 0.5d? |  |  |  | baseline start 2017-10-20 09:00 → 2017-10-16 09:00; baseline finish 2017-10-20 15:00 → 2017-10-16 14:00 |
| 52 | [RFS003] Deletar Aviso |  | 2017-10-17 15:00 A → 2017-10-17 14:00 A | 0.62d? → 0.5d? |  |  |  | baseline start 2017-10-21 09:00 → 2017-10-17 09:00; baseline finish 2017-10-23 14:00 → 2017-10-17 14:00 |
| 53 | [RFS004] Visualizar Aviso |  | 2017-10-17 15:00 A → 2017-10-17 14:00 A | 0.62d? → 0.5d? |  |  |  | baseline start 2017-10-23 09:00 → 2017-10-17 09:00; baseline finish 2017-10-23 15:00 → 2017-10-17 14:00 |
| 54 | [RFS024] Cadastrar Usuário |  | 2017-10-19 09:00 A → 2017-10-18 16:24 A (-1d) | 1d → 0.8d |  |  | none → 53 | was named [RFS009] Cadastrar Usuário; baseline start none → 2017-10-18 09:00; baseline finish none → 2017-10-18 16:24 |
| 55 | [RFS025] Consultar Usuário |  | 2017-10-18 15:00 A → 2017-10-18 14:00 A | 0.62d → 0.5d |  |  | none → 54 | was named [RFS010] Consultar Usuário; baseline start none → 2017-10-18 09:00; baseline finish none → 2017-10-18 14:00 |
| 56 | [RFS026] Alterar Usuário |  | 2017-10-19 15:00 A → 2017-10-19 14:00 A | 0.62d → 0.5d |  |  | none → 55 | was named [RFS011] Alterar Usuário; baseline start none → 2017-10-19 09:00; baseline finish none → 2017-10-19 14:00 |
| 57 | [RFS027] Remover Usuário |  | 2017-10-19 15:00 A → 2017-10-19 14:00 A | 0.62d → 0.5d |  |  | none → 56 | was named [RFS012] Remover Usuário; baseline start none → 2017-10-19 09:00; baseline finish none → 2017-10-19 14:00 |
| 58 | **Teste** |  |  |  |  |  |  | baseline start 2017-10-24 09:00 → 2017-10-20 09:00; baseline finish 2017-10-24 16:00 → 2017-10-20 16:00 |
| 59 | Teste e Validação do Release 1 |  | 2017-10-20 15:00 A → 2017-10-20 12:00 A | 0.62d → 0.38d |  |  | 53 → 57 | baseline start 2017-10-24 09:00 → 2017-10-20 09:00; baseline finish 2017-10-24 15:00 → 2017-10-20 12:00 |
| 60 | **Release 2** | 2017-10-27 09:00 A | 2017-10-31 18:00 → 2017-11-02 18:00 (+2d) | 3d → 5d | 0% → 100% |  |  | baseline finish 2017-10-31 14:00 → 2017-11-02 18:00 |
| 61 | [RFS005] Publicar Pergunta | 2017-10-27 09:00 A | 2017-10-27 15:00 → 2017-10-27 14:00 A | 0.62d → 0.5d | 0% → 100% | 3.06d → none |  | was named [RFS005] Publicar Mensagem; baseline start 2017-10-24 15:00 → 2017-10-27 09:00; baseline finish 2017-10-25 11:00 → 2017-10-27 14:00 |
| 62 | [RFS006] Deletar Pergunta | 2017-10-30 11:00 → 2017-10-30 09:00 A | 2017-10-30 17:00 → 2017-10-30 14:00 A | 0.62d → 0.5d | 0% → 100% | 3.06d → none | [RFS006] Editar Mensagem → 61 | was named [RFS007] Deletar Mensagem; baseline start 2017-10-27 15:00 → 2017-10-30 09:00; baseline finish 2017-10-30 11:00 → 2017-10-30 14:00 |
| 63 | [RFS007] Visualizar Pergunta | 2017-10-31 08:00 → 2017-10-30 14:00 A (-1d) | 2017-10-31 14:00 → 2017-10-30 18:00 A (-1d) | 0.62d → 0.38d | 0% → 100% | 3.06d → none |  | was named [RFS008] Visualizar Mensagem; baseline start 2017-10-30 11:00 → 2017-10-30 14:00; baseline finish 2017-10-30 17:00 → 2017-10-30 18:00 |
| 68 | **Teste** | 2017-11-01 09:00 → 2017-11-09 09:00 A (+8d) | 2017-11-01 18:00 → 2017-11-09 18:00 (+8d) |  | 0% → 100% |  |  | baseline start 2017-10-31 08:00 → 2017-11-09 09:00; baseline finish 2017-10-31 10:30 → 2017-11-09 18:00 |
| 69 | Teste e Validação do Release 2 | 2017-11-01 09:00 → 2017-11-09 09:00 A (+8d) | 2017-11-01 11:30 → 2017-11-09 10:30 A (+8d) | 0.31d → 0.19d | 0% → 100% | 2.56d → none | 63 → 67 | baseline start 2017-10-31 08:00 → 2017-11-09 09:00; baseline finish 2017-10-31 10:30 → 2017-11-09 10:30 |
| 70 | **Release 3** | 2017-11-02 09:00 → 2017-11-10 09:00 (+8d) | 2017-11-03 18:00 → 2017-11-16 18:00 (+13d) | 2d → 5d |  |  |  | baseline start 2017-11-03 09:00 → 2017-11-10 09:00; baseline finish 2017-11-08 17:00 → 2017-11-16 18:00 |
| 79 | **Teste** | 2017-11-03 09:00 → 2017-11-15 09:00 (+12d) | 2017-11-03 15:30 → 2017-11-15 18:00 (+12d) | 0.69d → 1d |  | 0.19d → none |  | baseline start 2017-11-09 08:00 → 2017-11-15 09:00; baseline finish 2017-11-09 14:30 → 2017-11-15 18:00 |
| 80 | Teste e Validação do Release 3 | 2017-11-03 09:00 → 2017-11-15 09:00 (+12d) | 2017-11-03 11:30 → 2017-11-15 10:30 (+12d) | 0.31d → 0.19d |  | 0.19d → 2.19d | [RFSF013] Avaliar Ferramenta → none | baseline start 2017-11-09 08:00 → 2017-11-15 09:00; baseline finish 2017-11-09 10:30 → 2017-11-15 10:30 |
| 93 | Aprovação do Documento | 2017-11-03 11:30 → 2017-11-23 13:00 (+20d) | 2017-11-03 15:30 → 2017-11-23 14:00 (+20d) | 0.38d → 0.12d |  | 0.19d → 0.38d | 80 → 92 | baseline start 2017-11-09 10:30 → 2017-11-23 13:00; baseline finish 2017-11-09 14:30 → 2017-11-23 14:00 |
